# ANM Requerimiento 4

Schedule from MS Project, 2020-02-10 to 2020-03-19, status date 2020-02-24.
Tecnocom

## Calendars

- Estándar: Mon-Fri 07:00-12:00, 13:00-17:00; Sat-Sun off.

## Resources

| Resource |
| --- |
| Juliana Acevedo |
| Manuel Peñarredonda |
| Rafael Escudero |
| Miguel Pimienta |
| John Hernández |
| Raúl Gualdrón |
| Jose Andrés Rivera |
| Helda Gómez |
| Nikos Sierra |

## Schedule

| ID | WBS | Task | Type | Duration | Start | Finish | Predecessors | Total slack | Free slack | Resources | Work | Text1 |
| --- | --- | --- | --- | --- | --- | --- | --- | --- | --- | --- | --- | --- |
| 1 | 1 | **Conversión y Carga Facturas AFP Computec** |  | 32.5d | 2020-02-10 08:00 | 2020-03-19 17:00 |  |  |  |  | 167h |  |
| 2 | 1.1 | **Configuración Test** |  | 1.75d? | 2020-02-10 08:00 | 2020-02-11 14:00 |  | 30.75d |  |  |  | 99% |
| 3 | 1.1.1 | Configuración Ambientes de conversion AFP Test |  | 1.75d | 2020-02-10 08:00 | 2020-02-11 14:00 |  | 30.75d |  |  |  | 100% |
| 4 | 1.1.2 | Configuración Alfresco Mapa Documental Factura legada |  | 1d? | 2020-02-10 08:00 | 2020-02-10 17:00 |  | 31.5d |  |  |  |  |
| 5 | 1.1.3 | Pruebas de conversión y carga |  | 1d? | 2020-02-10 08:00 | 2020-02-10 17:00 |  | 31.5d |  |  |  |  |
| 6 | 1.1.4 | HITO : Configuración Test |  | 1d? | 2020-02-10 08:00 | 2020-02-10 17:00 |  | 31.5d |  |  |  |  |
| 7 | 1.2 | **Preparación Ambiente pruebas de QA - Sprint I** |  | 2.38d | 2020-02-10 08:00 | 2020-02-12 09:00 |  | 30.12d |  |  | 19h | 100% |
| 8 | 1.2.1 | Configuración Alfresco Mapa Documental Factura legada |  | 0.12d | 2020-02-10 08:00 | 2020-02-10 09:00 |  | 30.12d | 0d | Jose Andrés Rivera | 1h | 100% |
| 9 | 1.2.2 | HITO : Ambiente para Pruebas ajustado | milestone | 0d | 2020-02-10 09:00 | 2020-02-10 09:00 | 8 | 30.12d | 0d | Jose Andrés Rivera |  | 100% |
| 10 | 1.2.3 | HITO: Entrega Pruebas QA - Sprint I | milestone | 0d | 2020-02-10 09:00 | 2020-02-10 09:00 | 9 | 30.12d | 0d | Juliana Acevedo; John Hernández; Miguel Pimienta |  |  |
| 11 | 1.2.4 | **Pruebas QA - Sprint I** |  | 2.25d | 2020-02-10 09:00 | 2020-02-12 09:00 |  | 30.12d |  |  | 18h | 78% |
| 12 | 1.2.4.1 | **Ejecución pruebas técnicas** |  | 2.25d | 2020-02-10 09:00 | 2020-02-12 09:00 |  | 30.12d |  |  | 18h | 78% |
| 13 | 1.2.4.1.1 | Ejecución y Registro de Pruebas |  | 1.75d | 2020-02-10 09:00 | 2020-02-11 15:00 | 10 | 30.12d | 0d | Raúl Gualdrón | 14h | 100% |
| 14 | 1.2.4.1.2 | Correción de Defectos |  | 0.5d | 2020-02-11 15:00 | 2020-02-12 09:00 | 13 | 30.12d | 0d | John Hernández | 4h | 95% |
| 15 | 1.2.4.1.3 | HITO: Pruebas de QA ejecutadas y Cerradas | milestone | 0d | 2020-02-12 09:00 | 2020-02-12 09:00 | 14, 13 | 30.12d |  | Raúl Gualdrón |  | 0% |
| 16 | 1.3 | **Radicación Masiva Salida - Sprint II** |  | 4.25d | 2020-02-10 08:00 | 2020-02-13 16:00 |  | 28.25d |  |  | 34h | 99% |
| 17 | 1.3.1 | **Implementación** |  | 1.75d | 2020-02-10 08:00 | 2020-02-11 14:00 |  | 28.25d |  |  | 14h | 100% |
| 18 | 1.3.1.1 | Codificación |  | 1.12d | 2020-02-10 08:00 | 2020-02-11 08:00 |  | 28.25d | 0d | Miguel Pimienta | 9h |  |
| 19 | 1.3.1.2 | Pruebas Unitarias |  | 0.5d | 2020-02-11 08:00 | 2020-02-11 12:00 | 18 | 28.25d | 0d | Miguel Pimienta | 4h | 100% |
| 20 | 1.3.1.3 | Carga GIT |  | 0.12d | 2020-02-11 13:00 | 2020-02-11 14:00 | 19 | 28.25d | 0d | Miguel Pimienta | 1h | 100% |
| 21 | 1.3.1.4 | HITO : Registro Pruebas Unitarias Anular Radicado | milestone | 0d | 2020-02-11 14:00 | 2020-02-11 14:00 | 20 | 28.25d | 0d | Miguel Pimienta |  | 100% |
| 22 | 1.3.2 | **Preparación Ambiente pruebas de QA - Sprint II** |  | 0.25d | 2020-02-11 14:00 | 2020-02-11 16:00 | 21 | 28.25d |  |  | 2h | 100% |
| 23 | 1.3.2.1 | Construcción artefactos para pruebas |  | 0.12d | 2020-02-11 14:00 | 2020-02-11 15:00 |  | 28.25d | 0d | John Hernández | 1h | 100% |
| 24 | 1.3.2.2 | Instalación en ambiente de pruebas |  | 0.12d | 2020-02-11 15:00 | 2020-02-11 16:00 | 23 | 28.25d | 0d | Jose Andrés Rivera | 1h | 100% |
| 25 | 1.3.2.3 | HITO : Ambiente para Pruebas ajustado | milestone | 0d | 2020-02-11 16:00 | 2020-02-11 16:00 | 24 | 28.25d | 0d | Jose Andrés Rivera |  | 100% |
| 26 | 1.3.3 | HITO: Entrega Pruebas QA - Sprint II | milestone | 0d | 2020-02-11 16:00 | 2020-02-11 16:00 | 25 | 28.25d | 0d | Juliana Acevedo; John Hernández; Miguel Pimienta |  |  |

Notes:
- 13: Agosto 26 Impacto en 19 Horas por la siguiente Razon: / - La versión con la que nos indicó NEPS, para desarrolar la solución, debía ser el JSF conpatible con el Ice Faces 4. por lo tanto la fábrica lo desarrolló con la versión 2.2 de JSF. El 25 de Agosto día del despliegue se evidenció que la versión del JSF en el servidor es la 1.1 y el Ice Faces es el 1.78. Requiere reajustar todo el desarrollo ya que entre versiónes del Ice Faces(1.78 y 4.0) existen 10 años de diferencia. Por lo tanto requiere volver a realizar todo el ciclo de pruebas
- 14: Agosto 26 Impacto en 18 Horas por la siguiente Razon: / - La versión con la que nos indicó NEPS, para desarrolar la solución, debía ser el JSF conpatible con el Ice Faces 4. por lo tanto la fábrica lo desarrolló con la versión 2.2 de JSF. El 25 de Agosto día del despliegue se evidenció que la versión del JSF en el servidor es la 1.1 y el Ice Faces es el 1.78. Requiere reajustar todo el desarrollo ya que entre versiónes del Ice Faces(1.78 y 4.0) existen 10 años de diferencia. Por lo tanto requiere volver a realizar todo el ciclo de pruebas

| ID | WBS | Task | Type | Duration | Start | Finish | Predecessors | Total slack | Free slack | Resources | Work | Text1 |
| --- | --- | --- | --- | --- | --- | --- | --- | --- | --- | --- | --- | --- |
| 27 | 1.3.4 | **Pruebas QA - Sprint II** |  | 2.25d | 2020-02-11 16:00 | 2020-02-13 16:00 |  | 28.25d |  |  | 18h | 78% |
| 28 | 1.3.4.1 | **Ejecución pruebas técnicas** |  | 2.25d | 2020-02-11 16:00 | 2020-02-13 16:00 | 21 | 28.25d |  |  | 18h | 78% |
| 29 | 1.3.4.1.1 | Ejecución y Registro de Pruebas |  | 1.75d | 2020-02-11 16:00 | 2020-02-13 11:00 | 26 | 28.25d | 0d | Raúl Gualdrón | 14h | 100% |
| 30 | 1.3.4.1.2 | Correción de Defectos |  | 0.5d | 2020-02-13 11:00 | 2020-02-13 16:00 | 29 | 28.25d | 0d | John Hernández | 4h | 95% |
| 31 | 1.3.4.1.3 | HITO: Pruebas de QA ejecutadas y Cerradas | milestone | 0d | 2020-02-13 16:00 | 2020-02-13 16:00 | 29, 30 | 28.25d |  | Raúl Gualdrón |  | 0% |
| 32 | 1.4 | **Código Barras - Sprint III** |  | 4.25d | 2020-02-10 08:00 | 2020-02-13 16:00 |  | 28.25d |  |  | 34h | 99% |
| 33 | 1.4.1 | **Implementación** |  | 1.75d | 2020-02-10 08:00 | 2020-02-11 14:00 |  | 28.25d |  |  | 14h | 100% |
| 34 | 1.4.1.1 | Codificación |  | 1.12d | 2020-02-10 08:00 | 2020-02-11 08:00 |  | 28.25d | 0d | Miguel Pimienta | 9h |  |
| 35 | 1.4.1.2 | Pruebas Unitarias |  | 0.5d | 2020-02-11 08:00 | 2020-02-11 12:00 | 34 | 28.25d | 0d | Miguel Pimienta | 4h | 100% |
| 36 | 1.4.1.3 | Carga GIT |  | 0.12d | 2020-02-11 13:00 | 2020-02-11 14:00 | 35 | 28.25d | 0d | Miguel Pimienta | 1h | 100% |
| 37 | 1.4.1.4 | HITO : Registro Pruebas Unitarias Anular Radicado | milestone | 0d | 2020-02-11 14:00 | 2020-02-11 14:00 | 36 | 28.25d | 0d | Miguel Pimienta |  | 100% |
| 38 | 1.4.2 | **Preparación Ambiente pruebas de QA - Sprint III** |  | 0.25d | 2020-02-11 14:00 | 2020-02-11 16:00 | 37 | 28.25d |  |  | 2h | 100% |
| 39 | 1.4.2.1 | Construcción artefactos para pruebas |  | 0.12d | 2020-02-11 14:00 | 2020-02-11 15:00 |  | 28.25d | 0d | John Hernández | 1h | 100% |
| 40 | 1.4.2.2 | Instalación en ambiente de pruebas |  | 0.12d | 2020-02-11 15:00 | 2020-02-11 16:00 | 39 | 28.25d | 0d | Jose Andrés Rivera | 1h | 100% |
| 41 | 1.4.2.3 | HITO : Ambiente para Pruebas ajustado | milestone | 0d | 2020-02-11 16:00 | 2020-02-11 16:00 | 40 | 28.25d | 0d | Jose Andrés Rivera |  | 100% |
| 42 | 1.4.3 | HITO: Entrega Pruebas QA - Sprint III | milestone | 0d | 2020-02-11 16:00 | 2020-02-11 16:00 | 41 | 28.25d | 0d | Juliana Acevedo; John Hernández; Miguel Pimienta |  |  |
| 43 | 1.4.4 | **Pruebas QA - Sprint III** |  | 2.25d | 2020-02-11 16:00 | 2020-02-13 16:00 |  | 28.25d |  |  | 18h | 78% |
| 44 | 1.4.4.1 | **Ejecución pruebas técnicas** |  | 2.25d | 2020-02-11 16:00 | 2020-02-13 16:00 | 37 | 28.25d |  |  | 18h | 78% |
| 45 | 1.4.4.1.1 | Ejecución y Registro de Pruebas |  | 1.75d | 2020-02-11 16:00 | 2020-02-13 11:00 | 42 | 28.25d | 0d | Raúl Gualdrón | 14h | 100% |
| 46 | 1.4.4.1.2 | Correción de Defectos |  | 0.5d | 2020-02-13 11:00 | 2020-02-13 16:00 | 45 | 28.25d | 0d | John Hernández | 4h | 95% |
| 47 | 1.4.4.1.3 | HITO: Pruebas de QA ejecutadas y Cerradas | milestone | 0d | 2020-02-13 16:00 | 2020-02-13 16:00 | 45, 46 | 28.25d |  | Raúl Gualdrón |  | 0% |
| 48 | 1.5 | **Configuración - Tablas Retención** |  | 0.5d | 2020-02-10 08:00 | 2020-02-10 12:00 |  | 32d |  |  | 12h | 99% |
| 49 | 1.5.1 | **Proceso actual de TRD** |  | 0.5d | 2020-02-10 08:00 | 2020-02-10 12:00 |  | 32d |  |  | 12h | 100% |
| 50 | 1.5.1.1 | Revisión Configuración TRD´s |  | 0.33d | 2020-02-10 08:00 | 2020-02-10 10:40 |  | 32d | 0d | Miguel Pimienta; John Hernández; Juliana Acevedo | 8h |  |
| 51 | 1.5.1.2 | Ajustes Acta TRD´s |  | 0.17d | 2020-02-10 10:40 | 2020-02-10 12:00 | 50 | 32d | 0d | Miguel Pimienta; John Hernández; Juliana Acevedo | 4h | 100% |
| 52 | 1.5.1.3 | HITO : Completitud Proceso TRD | milestone | 0d | 2020-02-10 12:00 | 2020-02-10 12:00 | 51 | 32d |  | Miguel Pimienta; John Hernández; Juliana Acevedo |  | 100% |

Notes:
- 29: Agosto 26 Impacto en 19 Horas por la siguiente Razon: / - La versión con la que nos indicó NEPS, para desarrolar la solución, debía ser el JSF conpatible con el Ice Faces 4. por lo tanto la fábrica lo desarrolló con la versión 2.2 de JSF. El 25 de Agosto día del despliegue se evidenció que la versión del JSF en el servidor es la 1.1 y el Ice Faces es el 1.78. Requiere reajustar todo el desarrollo ya que entre versiónes del Ice Faces(1.78 y 4.0) existen 10 años de diferencia. Por lo tanto requiere volver a realizar todo el ciclo de pruebas
- 30: Agosto 26 Impacto en 18 Horas por la siguiente Razon: / - La versión con la que nos indicó NEPS, para desarrolar la solución, debía ser el JSF conpatible con el Ice Faces 4. por lo tanto la fábrica lo desarrolló con la versión 2.2 de JSF. El 25 de Agosto día del despliegue se evidenció que la versión del JSF en el servidor es la 1.1 y el Ice Faces es el 1.78. Requiere reajustar todo el desarrollo ya que entre versiónes del Ice Faces(1.78 y 4.0) existen 10 años de diferencia. Por lo tanto requiere volver a realizar todo el ciclo de pruebas
- 45: Agosto 26 Impacto en 19 Horas por la siguiente Razon: / - La versión con la que nos indicó NEPS, para desarrolar la solución, debía ser el JSF conpatible con el Ice Faces 4. por lo tanto la fábrica lo desarrolló con la versión 2.2 de JSF. El 25 de Agosto día del despliegue se evidenció que la versión del JSF en el servidor es la 1.1 y el Ice Faces es el 1.78. Requiere reajustar todo el desarrollo ya que entre versiónes del Ice Faces(1.78 y 4.0) existen 10 años de diferencia. Por lo tanto requiere volver a realizar todo el ciclo de pruebas
- 46: Agosto 26 Impacto en 18 Horas por la siguiente Razon: / - La versión con la que nos indicó NEPS, para desarrolar la solución, debía ser el JSF conpatible con el Ice Faces 4. por lo tanto la fábrica lo desarrolló con la versión 2.2 de JSF. El 25 de Agosto día del despliegue se evidenció que la versión del JSF en el servidor es la 1.1 y el Ice Faces es el 1.78. Requiere reajustar todo el desarrollo ya que entre versiónes del Ice Faces(1.78 y 4.0) existen 10 años de diferencia. Por lo tanto requiere volver a realizar todo el ciclo de pruebas

| ID | WBS | Task | Type | Duration | Start | Finish | Predecessors | Total slack | Free slack | Resources | Work | Text1 |
| --- | --- | --- | --- | --- | --- | --- | --- | --- | --- | --- | --- | --- |
| 53 | 1.6 | **Pruebas Certificación** |  | 2.25d | 2020-02-10 08:00 | 2020-02-12 08:00 |  | 28.25d |  |  | 36h | 78% |
| 54 | 1.6.1 | **Ejecución pruebas integrales** |  | 1.75d | 2020-02-10 08:00 | 2020-02-11 14:00 |  | 28.25d |  |  | 28h | 78% |
| 55 | 1.6.1.1 | Ejecución y Registro de Pruebas |  | 1.38d | 2020-02-10 08:00 | 2020-02-11 10:00 |  | 28.25d | 0d | Raúl Gualdrón; Helda Gómez | 22h | 100% |
| 56 | 1.6.1.2 | Correción de Defectos |  | 0.38d | 2020-02-11 10:00 | 2020-02-11 14:00 | 55 | 28.25d | 0d | Miguel Pimienta; John Hernández | 6h | 95% |
| 57 | 1.6.1.3 | HITO: Pruebas de QA ejecutadas y Cerradas | milestone | 0d | 2020-02-11 14:00 | 2020-02-11 14:00 | 55, 56 | 28.25d | 0d | Helda Gómez; Raúl Gualdrón |  | 0% |
| 58 | 1.6.2 | **Informes de pruebas** |  | 0.5d | 2020-02-11 14:00 | 2020-02-12 08:00 |  | 28.25d |  |  | 8h | 0% |
| 59 | 1.6.2.1 | Elaboración Informe de Pruebas |  | 0.5d | 2020-02-11 14:00 | 2020-02-12 08:00 | 57 | 28.25d | 0d | Raúl Gualdrón; Helda Gómez | 8h | 0% |
| 60 | 1.6.2.2 | HITO : Informes de pruebas aprobado | milestone | 0d | 2020-02-12 08:00 | 2020-02-12 08:00 | 59 | 28.25d | 0d | Raúl Gualdrón; Helda Gómez |  | 0% |
| 61 | 1.7 | **Documentación** |  | 2d | 2020-02-12 08:00 | 2020-02-13 16:00 |  | 28.25d |  |  | 16h |  |
| 62 | 1.7.1 | **Manual de de usuario** |  | 2d | 2020-02-12 08:00 | 2020-02-13 16:00 |  | 28.25d |  |  | 16h | 9% |
| 63 | 1.7.1.1 | Creación Manual de usuario funcionalidades desarrolladas |  | 2d | 2020-02-12 08:00 | 2020-02-13 16:00 | 60 | 28.25d | 0d | Juliana Acevedo | 16h | 10% |
| 64 | 1.7.1.2 | HITO: Manuales de Usuario Aprobados | milestone | 0d | 2020-02-13 16:00 | 2020-02-13 16:00 | 63 | 28.25d |  | Juliana Acevedo |  | 0% |
| 65 | 1.8 | **Despliegue** |  | 2d | 2020-02-12 08:00 | 2020-02-13 16:00 |  | 28.25d |  |  | 16h |  |
| 66 | 1.8.1 | **Preparación Artefactos** |  | 2d | 2020-02-12 08:00 | 2020-02-13 16:00 |  | 28.25d |  |  | 16h | 9% |
| 67 | 1.8.1.1 | Creación y despliegue artefactos en PRD |  | 2d | 2020-02-12 08:00 | 2020-02-13 16:00 | 60 | 28.25d |  | Juliana Acevedo | 16h | 10% |

Notes:
- 55: Agosto 26 Impacto en 19 Horas por la siguiente Razon: / - La versión con la que nos indicó NEPS, para desarrolar la solución, debía ser el JSF conpatible con el Ice Faces 4. por lo tanto la fábrica lo desarrolló con la versión 2.2 de JSF. El 25 de Agosto día del despliegue se evidenció que la versión del JSF en el servidor es la 1.1 y el Ice Faces es el 1.78. Requiere reajustar todo el desarrollo ya que entre versiónes del Ice Faces(1.78 y 4.0) existen 10 años de diferencia. Por lo tanto requiere volver a realizar todo el ciclo de pruebas
- 56: Agosto 26 Impacto en 18 Horas por la siguiente Razon: / - La versión con la que nos indicó NEPS, para desarrolar la solución, debía ser el JSF conpatible con el Ice Faces 4. por lo tanto la fábrica lo desarrolló con la versión 2.2 de JSF. El 25 de Agosto día del despliegue se evidenció que la versión del JSF en el servidor es la 1.1 y el Ice Faces es el 1.78. Requiere reajustar todo el desarrollo ya que entre versiónes del Ice Faces(1.78 y 4.0) existen 10 años de diferencia. Por lo tanto requiere volver a realizar todo el ciclo de pruebas
- 59: Agosto 26 Impacto en 6 Horas por la siguiente Razon: / - La versión con la que nos indicó NEPS, para desarrolar la solución, debía ser el JSF conpatible con el Ice Faces 4. por lo tanto la fábrica lo desarrolló con la versión 2.2 de JSF. El 25 de Agosto día del despliegue se evidenció que la versión del JSF en el servidor es la 1.1 y el Ice Faces es el 1.78. Requiere reajustar todo el desarrollo ya que entre versiónes del Ice Faces(1.78 y 4.0) existen 10 años de diferencia. Por lo tanto requiere volver a realizar todo el ciclo de pruebas y nuevo informe
